# Lucky Home Real Estate

Schedule from MS Project, 2012-07-10 to 2013-01-16.
Hewlett-Packard

## Calendars

- Night Shift: Mon 23:00-24:00; Tue-Fri 00:00-03:00, 04:00-08:00, 23:00-24:00; Sat 00:00-03:00, 04:00-08:00; Sun off.

## Resources

| Resource |
| --- |
| Gayan |
| Mifraz |
| Shaja |
| Bakthi |
| Mahinda |
| Lucky Home |
| M4 |
| Lucky Homes/ M4 |
| Lucky Homes |
| Start System Parreral Run |
| Lucky Homes/M4 |

## Schedule

| ID | Task | Duration | Start | Finish | Predecessors | Total slack | Free slack | Constraint | Resources | Work |
| --- | --- | --- | --- | --- | --- | --- | --- | --- | --- | --- |
| 1 | Insfrastrucre And Server Instalation | 7d | 2012-07-10 | 2012-07-19 |  | 127d | 0d | start no earlier than 2012-07-10 | Lucky Home | 56h |
| 2 | System Instalation and Configuration | 2d | 2012-07-19 | 2012-07-21 | 1 | 127d |  |  | M4 | 16h |
| 3 | Data Migration and Meta data keying | 5d | 2012-10-30 | 2012-11-06 | 2 | 39d | 0d | start no earlier than 2012-10-30 | Lucky Homes/ M4 | 40h |
| 4 | Access Levels and Access Rights Definition | 2d | 2012-11-06 | 2012-11-08 | 3 | 39d | 0d |  | Lucky Homes | 16h |
| 5 | RealEstate Back Log Data entering | 10d | 2012-11-08 | 2012-11-22 | 4, 3 | 39d |  |  | Lucky Homes | 80h |
| 6 | EP Back Log Data entering | 5d | 2012-11-06 | 2012-11-13 | 3 | 46d |  |  | Lucky Homes | 40h |
| 7 | Finalize GL Entries | 6d | 2012-11-12 | 2012-11-20 |  | 41d |  | start no earlier than 2012-11-10 | Lucky Homes/ M4 | 48h |
| 8 | Finalsyzed the GL Opening Balance | 10d | 2012-12-03 | 2012-12-15 | 3 | 17d | 0d | start no earlier than 2012-12-01 | Lucky Homes | 80h |
| 9 | Upload the GL Opening Balance | 5d | 2012-12-17 | 2012-12-22 | 8 | 17d |  |  | M4 | 40h |
| 10 | Finalyzed Pre-printed documents | 3d | 2012-08-01 | 2012-08-04 |  | 117d |  | start no earlier than 2012-08-01 | Lucky Homes | 24h |
| 11 | Start System Parreral Run | 1d | 2012-12-03 | 2012-12-04 |  | 0d |  | start no earlier than 2012-12-01 | Lucky Homes | 8h |
| 12 | UAT | 30d | 2012-12-04 | 2013-01-15 | 11 | 0d |  |  | Lucky Homes/M4 | 240h |
| 13 | System Live run | 1d | 2013-01-15 | 2013-01-16 | 12 | 0d |  |  | Lucky Homes/ M4 | 8h |
