# PIP_NFL

Schedule from MS Project, 2010-05-03 to 2010-11-18.
Soul Lovers Inc.

## Calendars

- Standard: Mon-Fri 08:00-12:00, 13:00-17:00; Sat-Sun off.

## Resources

| Resource |
| --- |
| Shaja |
| Mahinda |
| Dhammika |
| Shaja/Mahinda |
| Nandana |
| Roshan |
| Sham |

## Schedule

| ID | WBS | Task | Duration | Start | Finish | Predecessors | Total slack | Free slack | Constraint | Resources | Work |
| --- | --- | --- | --- | --- | --- | --- | --- | --- | --- | --- | --- |
| 1 | 1 | **PIP_NFL** | 143.5d | 2010-05-03 | 2010-11-18 |  | 0d |  |  |  | 864h |
| 2 | 1.1 | Data Transfer LE/HP/LT | 11d | 2010-05-10 | 2010-05-24 |  | 70d |  | finish no earlier than 2010-05-24 | Shaja/Mahinda | 88h |
| 3 | 1.2 | **Leasing/Hire Purchase** | 21d | 2010-05-03 | 2010-05-31 |  | 0d |  |  |  | 400h |
| 4 | 1.2.1 | Edit List Modification | 2d | 2010-05-03 | 2010-05-04 |  | 0d |  |  | Roshan | 16h |
| 5 | 1.2.2 | Edit List Shortcut to be in First Approval Screen | 1d | 2010-05-05 | 2010-05-05 | 4 | 0d |  |  | Roshan | 8h |
| 6 | 1.2.3 | Show Contarct Origin | 1d | 2010-05-06 | 2010-05-06 | 5 | 0d |  |  | Roshan | 8h |
| 7 | 1.2.4 | Facility disbursement in two stages - need as a report | 2d | 2010-05-07 | 2010-05-10 | 6 | 62.5d | 0d |  |  |  |
| 8 | 1.2.5 | Credit Appraisal | 4d | 2010-05-11 | 2010-05-14 | 7 | 62.5d | 0d |  | Dhammika | 32h |
| 9 | 1.2.6 | Insurance renewal reminder | 3d | 2010-05-17 | 2010-05-19 | 8 | 62.5d | 0d |  | Shaja | 24h |
| 10 | 1.2.7 | Stamp Duty Calculation | 3d | 2010-05-20 | 2010-05-24 | 9 | 62.5d | 0d |  | Dhammika | 24h |
| 11 | 1.2.8 | Capital Part Settlement | 5d | 2010-05-25 | 2010-05-31 | 10 | 62.5d |  |  | Mahinda | 40h |
| 12 | 1.2.9 | Reposession | 21d | 2010-05-03 | 2010-05-31 |  | 62.5d |  | start no earlier than 2010-05-03 | Nandana | 168h |
| 13 | 1.2.10 | Bad Debt Provisioning | 5d | 2010-05-07 | 2010-05-13 | 6 | 0d |  |  | Shaja | 40h |
| 14 | 1.2.11 | Document Printing | 2.5d | 2010-05-14 | 2010-05-18 | 13 | 0d |  |  | Sham; Roshan | 40h |
| 15 | 1.3 | **Loan** | 42d | 2010-05-18 | 2010-07-15 |  | 0d |  |  |  | 376h |
| 16 | 1.3.1 | Other charges should be indicated in the quotation | 2d | 2010-05-18 | 2010-05-20 | 14 | 0d |  |  | Dhammika | 16h |
| 17 | 1.3.2 | Revolving Loan Modification | 10d | 2010-05-20 | 2010-06-03 | 16 | 0d |  |  | Shaja | 80h |
| 18 | 1.3.3 | Floating intrest rate option for facilities | 10d | 2010-06-03 | 2010-06-17 | 17 | 0d |  |  | Shaja | 80h |
| 19 | 1.3.4 | Capital Part settlements | 5d | 2010-06-17 | 2010-06-24 | 18 | 0d |  |  | Mahinda | 40h |
| 20 | 1.3.5 | Multiple Disbursement option | 15d | 2010-06-24 | 2010-07-15 | 19 | 0d |  |  | Shaja | 120h |
| 21 | 1.3.6 | Implement the Value Date Option(Waive Off ODI) | 5d | 2010-06-24 | 2010-07-01 | 19 | 40d |  |  | Mahinda | 40h |
| 22 | 1.4 | **FD** | 30d | 2010-07-15 | 2010-08-26 |  | 0d |  |  |  |  |
| 23 | 1.4.1 | Change Edit list to get payment verification details first to appear. | 1d | 2010-07-15 | 2010-07-16 | 20 | 0d |  |  |  |  |
| 24 | 1.4.2 | Agent Commission. | 3d | 2010-07-16 | 2010-07-21 | 23 | 0d |  |  |  |  |
| 25 | 1.4.3 | Dual Authorization for Special Rate | 4d | 2010-07-21 | 2010-07-27 | 24 | 0d |  |  |  |  |
| 26 | 1.4.4 | Closure Confirmation | 5d | 2010-07-27 | 2010-08-03 | 25 | 0d |  |  |  |  |
| 27 | 1.4.5 | Introduce Payment Instruction for Loan | 2d | 2010-08-03 | 2010-08-05 | 26 | 0d |  |  |  |  |
| 28 | 1.4.6 | Ceritificate Re-Print | 2d | 2010-08-05 | 2010-08-09 | 27 | 0d |  |  |  |  |
| 29 | 1.4.7 | Delivery Method of Certificate | 3d | 2010-08-09 | 2010-08-12 | 28 | 0d |  |  |  |  |
| 30 | 1.4.8 | FD letter of setoff | 2d | 2010-08-12 | 2010-08-16 | 29 | 0d |  |  |  |  |
| 31 | 1.4.9 | Slip transfer for deposit payments | 3d | 2010-08-16 | 2010-08-19 | 30 | 0d |  |  |  |  |
| 32 | 1.4.10 | Validation Before DayEnd | 5d | 2010-08-19 | 2010-08-26 | 31 | 0d |  |  |  |  |

| ID | WBS | Task | Duration | Start | Finish | Predecessors | Total slack |
| --- | --- | --- | --- | --- | --- | --- | --- |
| 33 | 1.5 | **General Ledger** | 60d | 2010-08-26 | 2010-11-18 |  | 0d |
| 34 | 1.5.1 | Auto generated number on Cheque printing. | 3d | 2010-08-26 | 2010-08-31 | 32 | 0d |
| 35 | 1.5.2 | List of un posted items at any given point. | 4d | 2010-08-31 | 2010-09-06 | 34 | 0d |
| 36 | 1.5.3 | Pay voucher Approval | 3d | 2010-09-06 | 2010-09-09 | 35 | 0d |
| 37 | 1.5.4 | Option to Activate and De-Activate Accounts | 4d | 2010-09-09 | 2010-09-15 | 36 | 0d |
| 38 | 1.5.5 | Balance sheet, Profit and Loss A/C and Cash flow statement. | 20d | 2010-09-15 | 2010-10-13 | 37 | 0d |
| 39 | 1.5.6 | Budgeted and Variance analysis reports on the profit and Loss Account. | 11d | 2010-10-13 | 2010-10-28 | 38 | 0d |
| 40 | 1.5.7 | On line reports to CBSL. | 5d | 2010-10-28 | 2010-11-04 | 39 | 0d |
| 41 | 1.5.8 | Cheque printing | 2d | 2010-11-04 | 2010-11-08 | 40 | 0d |
| 42 | 1.5.9 | List on Lease creditors’ control - Report | 3d | 2010-11-08 | 2010-11-11 | 41 | 0d |
| 43 | 1.5.10 | CB age analysis report arrears slab to be changed by the user | 3d | 2010-11-11 | 2010-11-16 | 42 | 0d |
| 44 | 1.5.11 | Control to block cash book account from journal entries | 2d | 2010-11-16 | 2010-11-18 | 43 | 0d |
